Schedule from MS Project, 2009-10-12 to 2010-01-25, costs in $, A marks actual dates.

## Calendars

- Standard: Mon-Fri 08:00-12:00, 13:00-17:00; Sat-Sun off.

## Resources

| Resource | Rate |
| --- | --- |
| Kiệt Test | 30 |
| Tester A | 10 |
| Tester B | 20 |
| Tester C | 15 |
| Tester D | 20 |

## Schedule

| ID | WBS | Task | Duration | Start | Finish | Predecessors | Complete | Baseline start | Baseline finish | Baseline duration | Resources | Work | Actual work | Cost | Baseline cost | Actual cost |
| --- | --- | --- | --- | --- | --- | --- | --- | --- | --- | --- | --- | --- | --- | --- | --- | --- |
| 1 | 1 | **Test Plan** | 76d | 2009-10-12 A | 2010-01-25 A |  | 100% | 2009-10-12 | 2010-01-18 | 71d |  | 1704h | 1704h | 31,680 | 29,400 | 31,680 |
| 2 | 1.1 | Develop Test Design | 7d | 2009-10-12 A | 2009-10-20 A |  | 100% | 2009-10-12 | 2009-10-20 | 7d |  |  |  |  |  |  |
| 3 | 1.2 | Develop Test Case | 10d | 2009-10-21 A | 2009-11-03 A | 2 | 100% | 2009-10-21 | 2009-11-03 | 10d | Kiệt Test; Tester A; Tester B | 240h | 240h | 4,800 | 4,800 | 4,800 |
| 4 | 1.3 | Develop Test Procedure | 16d | 2009-11-04 A | 2009-11-25 A | 3 | 100% | 2009-11-04 | 2009-11-23 | 14d | Tester B; Tester C | 256h | 256h | 4,480 | 3,920 | 4,480 |
| 5 | 1.4 | Develop Test Item Transmittal Report | 6d | 2009-10-12 A | 2009-10-19 A |  | 100% | 2009-10-12 | 2009-10-16 | 5d | Tester C; Tester D | 96h | 96h | 1,680 | 1,400 | 1,680 |
| 6 | 1.5 | Prepare Tools and Test Scripts | 13d | 2009-11-26 A | 2009-12-14 A | 4 | 100% | 2009-11-24 | 2009-12-07 | 10d | Kiệt Test; Tester A; Tester B | 312h | 312h | 6,240 | 4,800 | 6,240 |
| 7 | 1.6 | Review Test Plan and Attachmens | 3d | 2009-10-12 A | 2009-10-14 A |  | 100% | 2009-10-12 | 2009-10-14 | 3d | Kiệt Test; Tester B | 48h | 48h | 1,200 | 1,200 | 1,200 |
| 8 | 1.7 | Check - System is Ready to be Tested | 2d | 2009-12-15 A | 2009-12-16 A | 6, 7 | 100% | 2009-12-08 | 2009-12-09 | 2d | Tester C; Tester D | 32h | 32h | 560 | 560 | 560 |
| 9 | 1.8 | Add Design Documents to CMS | 4d | 2009-10-21 A | 2009-10-26 A | 2, 5 | 100% | 2009-10-21 | 2009-10-26 | 4d | Tester C; Tester D | 64h | 64h | 1,120 | 1,120 | 1,120 |
| 10 | 1.9 | Document Test Results | 5d | 2009-12-17 A | 2009-12-23 A | 8 | 100% | 2009-12-10 | 2009-12-16 | 5d | Tester A; Tester B | 80h | 80h | 1,200 | 1,200 | 1,200 |
| 11 | 1.10 | Conduct User Acceptance Testing | 8d | 2009-12-24 A | 2010-01-04 A | 10, 9 | 100% | 2009-12-17 | 2009-12-28 | 8d | Tester A; Tester B; Tester C; Tester D | 256h | 256h | 4,160 | 4,160 | 4,160 |
| 12 | 1.11 | Finalize Test Reports | 5d | 2010-01-05 A | 2010-01-11 A | 11 | 100% | 2009-12-29 | 2010-01-04 | 5d | Kiệt Test; Tester A | 80h | 80h | 1,600 | 1,600 | 1,600 |
| 13 | 1.12 | Deploy Test Environment | 6d | 2010-01-12 A | 2010-01-19 A | 12 | 100% | 2010-01-05 | 2010-01-12 | 6d | Kiệt Test; Tester A; Tester B | 144h | 144h | 2,880 | 2,880 | 2,880 |
| 14 | 1.13 | Conduct Post-Implementation Review | 4d | 2010-01-20 A | 2010-01-25 A | 13 | 100% | 2010-01-13 | 2010-01-18 | 4d | Tester B; Tester C; Tester D | 96h | 96h | 1,760 | 1,760 | 1,760 |
